# CRONOGRAMA

Schedule from MS Project, 2023-11-06 to 2024-01-06.

## Calendars

- Copy of Standard: Mon-Sat 08:00-13:00, 14:00-17:00; Sun off.

## Schedule

| ID | WBS | Task | Duration | Start | Finish | Predecessors | Total slack | Free slack |
| --- | --- | --- | --- | --- | --- | --- | --- | --- |
| 1 | 1 | **SITEMA DE ABASTECIMIENTO DE AGUA - PUSACPAMPA** | 54d | 2023-11-06 | 2024-01-06 |  | 0d |  |
| 2 | 1.1 | **TRABAJOS GENERALES** | 3d | 2023-11-06 | 2023-11-08 |  | 0d |  |
| 3 | 1.1.1 | **OBRAS GENERALES** | 3d | 2023-11-06 | 2023-11-08 |  | 0d |  |
| 4 | 1.1.1.1 | **TRABAJOS PRELIMINARES** | 3d | 2023-11-06 | 2023-11-08 |  | 0d |  |
| 5 | 1.1.1.1.1 | ALQUILER DE ALMACEN Y CASETA DE GUARDINIA - OFICINA | 1d | 2023-11-06 | 2023-11-06 |  | 0d |  |
| 6 | 1.1.1.1.2 | CARTEL DE IDENTIFICACION DE LA OBRA DE 3.60 X 4.80 m | 1d | 2023-11-07 | 2023-11-07 | 5 | 0d |  |
| 7 | 1.1.1.1.3 | MOVILIZACION DE MAQUINARIAS, EQUIPOS Y HERRAMIENTAS PARA LA OBRA. | 1d | 2023-11-08 | 2023-11-08 | 6 | 0d |  |
| 8 | 1.1.1.2 | **SEGURIDAD Y SALUD** | 3d | 2023-11-06 | 2023-11-08 |  | 1d |  |
| 9 | 1.1.1.2.1 | EQUIPO DE PROTECCIÓN INDIVIDUAL | 1d | 2023-11-06 | 2023-11-06 |  | 53d |  |
| 10 | 1.1.1.2.2 | EQUIPO DE PROTECCIÓN COLECTIVA | 1d | 2023-11-07 | 2023-11-07 | 5 | 0d |  |
| 11 | 1.1.1.2.3 | CAPACITACION EN SEGURIDAD Y SALUD | 1d | 2023-11-08 | 2023-11-08 | 10 | 0d |  |
| 12 | 1.2 | **SISTEMA DE AGUA POTABLE - PUSACPAMPA** | 51d | 2023-11-09 | 2024-01-06 | 11 | 0d |  |
| 13 | 1.2.1 | **CAPTACIÓN TIPO LADERA (02 UND)** | 20d | 2023-11-09 | 2023-12-01 |  | 0d |  |
| 14 | 1.2.1.1 | TRABAJOS PRELIMINARES | 2d | 2023-11-09 | 2023-11-10 | 7 | 0d |  |
| 15 | 1.2.1.2 | MOVIMIENTO DE TIERRAS | 10d | 2023-11-11 | 2023-11-22 | 14 | 31d | 0d |
| 16 | 1.2.1.3 | OBRAS DE CONCRETO SIMPLE | 3d | 2023-11-23 | 2023-11-25 | 15 | 31d | 0d |
| 17 | 1.2.1.4 | OBRAS DE CONCRETO ARMADO | 2d | 2023-11-27 | 2023-11-28 | 16 | 31d | 0d |
| 18 | 1.2.1.5 | REVOQUES ENLUCIDOS Y MOLDURAS | 2d | 2023-11-29 | 2023-11-30 | 17 | 31d | 0d |
| 19 | 1.2.1.6 | VALVULAS Y ACCESORIOS | 1d | 2023-12-01 | 2023-12-01 | 18 | 31d |  |
| 20 | 1.2.2 | **LINEA DE CONDUCCION (L=?M)** | 20d | 2023-11-11 | 2023-12-04 |  | 0d |  |
| 21 | 1.2.2.1 | OBRAS PRELIMINARES | 3d | 2023-11-11 | 2023-11-14 | 14 | 0d |  |
| 22 | 1.2.2.2 | MOVIMIENTO DE TIERRAS | 10d | 2023-11-15 | 2023-11-25 | 21 | 29d | 0d |
| 23 | 1.2.2.3 | SUMINISTRO E INSTALACION DE TUBERIAS | 4d | 2023-11-27 | 2023-11-30 | 22 | 29d | 0d |
| 24 | 1.2.2.4 | SUMINISTRO E INSTALACION DE ACCESORIOS EN LINEA DE CONDUCCION. | 3d | 2023-12-01 | 2023-12-04 | 23 | 29d |  |

| ID | WBS | Task | Duration | Start | Finish | Predecessors | Total slack | Free slack |
| --- | --- | --- | --- | --- | --- | --- | --- | --- |
| 25 | 1.2.3 | **TANQUE DE ALMACENAMIENTO APOYADO DE 5m3** | 46d | 2023-11-15 | 2024-01-06 |  | 0d |  |
| 26 | 1.2.3.1 | TRABAJOS PRELIMINARES | 2d | 2023-11-15 | 2023-11-16 | 21 | 0d |  |
| 27 | 1.2.3.2 | **ESTRUCTURAS** | 23d | 2023-11-17 | 2023-12-13 |  | 0d |  |
| 28 | 1.2.3.2.1 | MOVIMIENTO DE TIERRAS | 15d | 2023-11-17 | 2023-12-04 | 26 | 0d |  |
| 29 | 1.2.3.2.2 | OBRAS DE CONCRETO SIMPLE | 3d | 2023-12-05 | 2023-12-07 | 28 | 0d |  |
| 30 | 1.2.3.2.3 | OBRAS DE CONCRETO ARMADO | 5d | 2023-12-08 | 2023-12-13 | 29 | 0d |  |
| 31 | 1.2.3.3 | **ARQUITECTURA** | 4d | 2023-12-14 | 2023-12-18 |  | 0d |  |
| 32 | 1.2.3.3.1 | REVOQUES ENLUCIDOS Y MOLDURAS | 2d | 2023-12-14 | 2023-12-15 | 30 | 0d |  |
| 33 | 1.2.3.3.2 | PINTURA | 1d | 2023-12-16 | 2023-12-16 | 32 | 0d |  |
| 34 | 1.2.3.3.3 | VARIOS | 1d | 2023-12-18 | 2023-12-18 | 33 | 0d |  |
| 35 | 1.2.3.4 | **CASETA DE CLORACION** | 4d | 2023-12-19 | 2023-12-22 |  | 0d |  |
| 36 | 1.2.3.4.1 | CONCRETO ARMADO | 2d | 2023-12-19 | 2023-12-20 | 34 | 0d |  |
| 37 | 1.2.3.4.2 | REVOQUES ENLUCIDOS Y MOLDURAS | 1d | 2023-12-21 | 2023-12-21 | 36 | 0d |  |
| 38 | 1.2.3.4.3 | VARIOS | 1d | 2023-12-22 | 2023-12-22 | 37 | 0d |  |
| 39 | 1.2.3.5 | **CASETA DE VALVULAS** | 13d | 2023-12-23 | 2024-01-06 |  | 0d |  |
| 40 | 1.2.3.5.1 | ESTRUCTURAS | 10d | 2023-12-23 | 2024-01-03 | 38 | 0d |  |
| 41 | 1.2.3.5.2 | ARQUITECTURA | 3d | 2024-01-04 | 2024-01-06 | 40 | 0d |  |
| 42 | 1.2.4 | **RED DE DISTRIBUCION (L=?M)** | 19d | 2023-12-05 | 2023-12-26 |  | 10d |  |
| 43 | 1.2.4.1 | TRABAJOS PRELIMINARES | 2d | 2023-12-05 | 2023-12-06 | 28 | 10d | 0d |
| 44 | 1.2.4.2 | MOVIMIENTO DE TIERRAS | 10d | 2023-12-07 | 2023-12-18 | 43 | 10d | 0d |
| 45 | 1.2.4.3 | SUMINISTRO E INSTALACION DE TUBERIAS | 4d | 2023-12-19 | 2023-12-22 | 44 | 10d | 0d |
| 46 | 1.2.4.4 | SUMINISTRO E INSTALACION DE ACCESORIOS EN RED DE DISTRIBUCION | 3d | 2023-12-23 | 2023-12-26 | 45 | 10d |  |
| 47 | 1.2.5 | **CAMARAS ROMPE PRESION** | 10d | 2023-12-07 | 2023-12-18 |  | 12d |  |
| 48 | 1.2.5.1 | TRABAJOS PRELIMINARES | 1d | 2023-12-07 | 2023-12-07 | 43 | 12d | 0d |
| 49 | 1.2.5.2 | MOVIMIENTO DE TIERRAS | 4d | 2023-12-08 | 2023-12-12 | 48 | 17d | 0d |
| 50 | 1.2.5.3 | OBRAS DE CONCRETO SIMPLE | 2d | 2023-12-13 | 2023-12-14 | 49 | 17d | 0d |
| 51 | 1.2.5.4 | OBRAS DE CONCRETO ARMADO | 2d | 2023-12-15 | 2023-12-16 | 50 | 17d | 0d |
| 52 | 1.2.5.5 | ACCESORIOS | 1d | 2023-12-18 | 2023-12-18 | 51 | 17d |  |

| ID | WBS | Task | Duration | Start | Finish | Predecessors | Total slack | Free slack |
| --- | --- | --- | --- | --- | --- | --- | --- | --- |
| 53 | 1.2.6 | **CONEXIONES DOMICILIARIAS** | 14d | 2023-12-08 | 2023-12-23 |  | 12d |  |
| 54 | 1.2.6.1 | TRABAJOS PRELIMINARES | 1d | 2023-12-08 | 2023-12-08 | 48 | 12d | 0d |
| 55 | 1.2.6.2 | MOVIMIENTO DE TIERRAS | 10d | 2023-12-09 | 2023-12-20 | 54 | 12d | 0d |
| 56 | 1.2.6.3 | SUMINISTRO E INSTALACION DE TUBERIAS | 1d | 2023-12-21 | 2023-12-21 | 55 | 12d | 0d |
| 57 | 1.2.6.4 | SUMINISTRO E INSTALACION DE ACCESORIOS - CONEXIONES DOMICILIARIAS | 2d | 2023-12-22 | 2023-12-23 | 56 | 12d |  |
